# Tiến độ thi công Ca xe ca máy Cống Hộp Tuyến A5 (L = 2,170m)

Schedule from MS Project XML, 2026-09-20 to 2026-10-25.

## Schedule

| ID | WBS | Task | Type | Duration | Start | Finish |
| --- | --- | --- | --- | --- | --- | --- |
| 1 | 1 | **THI CÔNG CỐNG HỘP TUYẾN A5 (L = 2,170M - 63 HỐ GA)** |  | 36d | 2026-09-20 | 2026-10-25 |
| 2 | 1.1 | Đào đất hố móng cống hộp 3 mũi (73,800 m3) |  | 16d | 2026-09-20 | 2026-10-05 |
| 3 | 1.2 | Đào hố móng 63 hố ga thu nước & đấu nối (12,650 m3) |  | 12d | 2026-09-22 | 2026-10-03 |
| 4 | 1.3 | Vận chuyển đất đào cự ly <5km (86,450 m3) |  | 16d | 2026-09-20 | 2026-10-05 |
| 5 | 1.4 | Bơm hạ mực nước ngầm hố móng cống 24/7 |  | 36d | 2026-09-20 | 2026-10-25 |
| 6 | 1.5 | Đệm cát / đá dăm 4x6 lót móng cống (1,250 m3) |  | 14d | 2026-09-22 | 2026-10-05 |
| 7 | 1.6 | Bê tông lót móng M100# dày 50mm (592.4 m3) |  | 16d | 2026-09-23 | 2026-10-08 |
| 8 | 1.7 | Gia công & lắp dựng cốt thép CB300/CB400 (753.36 tấn) |  | 22d | 2026-09-24 | 2026-10-15 |
| 9 | 1.8 | Lắp dựng ván khuôn thép/phủ phim cống (44,940.7 m2) |  | 22d | 2026-09-25 | 2026-10-16 |
| 10 | 1.9 | Đổ bê tông thân cống B20 (11,870.0 m3) |  | 22d | 2026-09-26 | 2026-10-17 |
| 11 | 1.10 | Vận chuyển bê tông thương phẩm B20 trạm trộn (264 ca xe) |  | 22d | 2026-09-26 | 2026-10-17 |
| 12 | 1.11 | Bê tông & cốt thép 63 hố ga BTCT (409.5 m3) |  | 15d | 2026-09-28 | 2026-10-12 |
| 13 | 1.12 | Máy xúc lốp PC140 cẩu lắp & đầm cóc mang cống (2,170 md) |  | 22d | 2026-09-26 | 2026-10-17 |
| 14 | 1.13 | Đắp cát/đất K95 hoàn trả mang cống (54,200 m3) |  | 18d | 2026-10-05 | 2026-10-22 |
| 15 | 1.14 | Máy ủi D3-D5 san gạt đỉnh móng hoàn trả |  | 18d | 2026-10-05 | 2026-10-22 |
| 16 | 1.15 | Máy lu rung 12-16T đầm nén K95 hoàn trả |  | 18d | 2026-10-05 | 2026-10-22 |
| 17 | 1.16 | Xe téc cấp dầu lưu động & máy phát điện phục vụ |  | 36d | 2026-09-20 | 2026-10-25 |
| 18 | 2 | HOÀN THÀNH TOÀN DIỆN HẠNG MỤC CỐNG HỘP TUYẾN A5 | milestone | 0d | 2026-10-25 | 2026-10-25 |
