# TIẾN ĐỘ THI CÔNG CẦU KM19+529.080 (3 NHỊP SUPER-T L=38.2M, DỰ ÁN CAO TỐC TUYÊN QUANG - HÀ GIANG)

Schedule from MS Project, 2026-10-01 to 2027-04-05.

## Calendars

- Standard: Mon-Fri 08:00-12:00, 13:00-17:00; Sat-Sun off.

## Resources

| Resource |
| --- |
| Tổ trắc đạc & định vị tim mốc cầu |
| Tổ máy khoan cọc nhồi D1200 & trắc địa Karst |
| Tổ thợ sắt thép cọc nhồi & bệ mố trụ |
| Tổ ván khuôn & đà giáo thân xà mũ |
| Tổ đúc dầm Super-T tại bãi đúc (Bê tông C45) |
| Tổ căng kéo cáp DUL 15.2mm & bơm vữa |
| Tổ vận chuyển & xe lao dầm P43 chuyên dụng |
| Tổ bản mặt cầu & liên tục nhiệt |
| Tổ thảm bê tông nhựa C16 & khe răng lược |
| Máy khoan cọc xoay đập thủy lực R618 |
| Giá lao dầm Super-T trọng lượng 78.88T |
| Trạm trộn BTXM 90m3/h & xe bồn 10m3 |

## Schedule

| ID | WBS | Task | Type | Duration | Start | Finish | Predecessors | Total slack | Free slack |
| --- | --- | --- | --- | --- | --- | --- | --- | --- | --- |
| 1 | 1.0 | **CHUẨN BỊ MẶT BẰNG, ĐƯỜNG CÔNG VỤ & BÃI ĐÚC DẦM** |  | 20d? | 2026-10-01 | 2026-10-28 |  | 0d |  |
| 2 | 1.1 | Bàn giao tim mốc VN2000, cao độ quốc gia & tim mốc cầu | milestone | 0d? | 2026-10-01 | 2026-10-01 |  | 0d |  |
| 3 | 1.2 | Rà phá bom mìn, dọn dẹp mặt bằng & dựng lán trại |  | 4d? | 2026-10-01 | 2026-10-06 | 2 | 0d |  |
| 4 | 1.3 | Thi công đường công vụ nhánh 6 & 6A tiếp cận mố trụ |  | 6d? | 2026-10-07 | 2026-10-14 | 3 | 0d |  |
| 5 | 1.4 | Xây dựng bãi đúc dầm Super-T, bệ đúc & trạm trộn BTXM |  | 10d? | 2026-10-15 | 2026-10-28 | 4 | 40d | 0d |
| 6 | 2.0 | **KHOAN CỌC NHỒI D1200MM & XỬ LÝ ĐỊA CHẤT KARST** |  | 59d? | 2026-10-15 | 2027-01-05 |  | 0d |  |
| 7 | 2.1 | Khoan thăm dò hang Karst sâu 5m dưới mũi cọc |  | 9d? | 2026-10-15 | 2026-10-27 | 4 | 0d |  |
| 8 | 2.2 | Khoan cọc nhồi D1200mm M1 (3 cọc L=20m) & đổ bê tông C30 |  | 5d? | 2026-10-28 | 2026-11-03 | 7 | 0d |  |
| 9 | 2.3 | Khoan cọc nhồi D1200mm Trụ T1 (8 cọc L=40m) & đổ bê tông C30 |  | 14d? | 2026-11-04 | 2026-11-23 | 8 | 0d |  |
| 10 | 2.4 | Khoan cọc nhồi D1200mm Trụ T2 (8 cọc L=30m) & đổ bê tông C30 |  | 13d? | 2026-11-24 | 2026-12-10 | 9 | 0d |  |
| 11 | 2.5 | Khoan cọc nhồi D1200mm M2 (7 cọc L=36m) & đổ bê tông C30 |  | 13d? | 2026-12-11 | 2026-12-29 | 10 | 0d |  |
| 12 | 2.6 | Thí nghiệm siêu âm 156 mặt cắt, kiểm tra mũi cọc & thử tải PDA (9434 kN) |  | 5d? | 2026-12-30 | 2027-01-05 | 10, 11 | 0d |  |
| 13 | 3.0 | **KẾT CẤU PHẦN DƯỚI (BỆ, THÂN, XÀ MŨ M1, M2 & T1, T2)** |  | 28d? | 2027-01-06 | 2027-02-12 |  | 0d |  |
| 14 | 3.1 | Đào hố móng, đập đầu cọc & đổ bê tông lót mác C10 |  | 5d? | 2027-01-06 | 2027-01-12 | 12 | 0d |  |
| 15 | 3.2 | Lắp dựng cốt thép, ván khuôn & đổ bê tông bệ móng mố M1, M2 |  | 6d? | 2027-01-13 | 2027-01-20 | 14 | 44d | 0d |
| 16 | 3.3 | Lắp dựng cốt thép, ván khuôn & đổ bê tông bệ trụ T1, T2 C30 |  | 8d? | 2027-01-13 | 2027-01-22 | 14 | 0d |  |
| 17 | 3.4 | Thi công thân đặc trụ T1, T2 (H=14.5m & 11.4m) bê tông C30 |  | 10d? | 2027-01-25 | 2027-02-05 | 16 | 0d |  |
| 18 | 3.5 | Thi công thân mố chân dê M1 và thân mố chữ U M2 C30 |  | 9d? | 2027-01-21 | 2027-02-02 | 15 | 44d |  |
| 19 | 3.6 | Thi công xà mũ trụ T1, T2, đá kê gối & khối chống xô C30 |  | 5d? | 2027-02-08 | 2027-02-12 | 17 | 0d |  |
| 20 | 4.0 | **ĐÚC DẦM SUPER-T L=38.2M & LAO LẮP 3 NHỊP** |  | 87d? | 2026-10-29 | 2027-02-26 |  | 0d |  |
| 21 | 4.1 | Gia công cốt thép, luồn cáp DUL 15 phiến dầm tại bãi đúc |  | 20d? | 2026-10-29 | 2026-11-25 | 5 | 40d | 0d |
| 22 | 4.2 | Đổ bê tông C45 15 phiến dầm Super-T (dưỡng hộ đạt R28) |  | 15d? | 2026-11-26 | 2026-12-16 | 21 | 40d | 0d |
| 23 | 4.3 | Căng kéo cáp DUL tao xoắn 15.2mm & bơm vữa ống gen |  | 6d? | 2026-12-17 | 2026-12-24 | 22 | 40d |  |
| 24 | 4.4 | Lắp đặt 30 gối chậu cao su đơn/song hướng mố trụ |  | 4d? | 2027-02-15 | 2027-02-18 | 19 | 0d |  |
| 25 | 4.5 | Lắp đường ray P43, vận chuyển & lao lắp 15 phiến dầm Super-T |  | 6d? | 2027-02-19 | 2027-02-26 | 23, 24 | 0d |  |

| ID | WBS | Task | Duration | Start | Finish | Predecessors | Total slack |
| --- | --- | --- | --- | --- | --- | --- | --- |
| 26 | 5.0 | **DẦM NGANG, BẢN MẶT CẦU, LIÊN TỤC NHIỆT & ĐƯỜNG ĐẦU CẦU** | 21d? | 2027-03-01 | 2027-03-29 |  | 0d |
| 27 | 5.1 | Đổ bê tông dầm ngang mố trụ & bản liên tục nhiệt C35 | 5d? | 2027-03-01 | 2027-03-05 | 25 | 0d |
| 28 | 5.2 | Lắp 510 tấm ván khuôn đúc sẵn & lắp cốt thép bản mặt cầu | 3d? | 2027-03-08 | 2027-03-10 | 27 | 0d |
| 29 | 5.3 | Đổ bê tông bản mặt cầu tại chỗ C35 (dày 180mm) | 4d? | 2027-03-11 | 2027-03-16 | 28 | 0d |
| 30 | 5.4 | Đổ bê tông bản quá độ C25 sau 2 mố & đắp hạt chọn lọc K98 | 5d? | 2027-03-08 | 2027-03-12 | 27 | 16d |
| 31 | 5.5 | Lắp đặt khe co giãn răng lược D=100mm & ống thoát nước D150 | 5d? | 2027-03-17 | 2027-03-23 | 29 | 0d |
| 32 | 5.6 | Đổ bê tông gờ lan can C25 & lắp dựng tay vịn mạ kẽm | 6d? | 2027-03-17 | 2027-03-24 | 29 | 8d |
| 33 | 5.7 | Phun màng chống thấm & thảm bê tông nhựa C16 dày 7cm | 4d? | 2027-03-24 | 2027-03-29 | 31 | 0d |
| 34 | 6.0 | **THỬ TẢI CẦU, KIỂM ĐỊNH & BÀN GIAO KHAI THÁC** | 5d? | 2027-03-30 | 2027-04-05 |  | 0d |
| 35 | 6.1 | Thử tải tĩnh/động toàn cầu bằng đoàn xe tải nặng | 3d? | 2027-03-30 | 2027-04-01 | 33 | 0d |
| 36 | 6.2 | Hoàn thiện hồ sơ hoàn công & bàn giao đưa vào khai thác | 2d? | 2027-04-02 | 2027-04-05 | 35 | 0d |
