# Tiến độ thi công Ca xe ca máy Cầu Km19+529.080 (3 Nhịp Super-T L=38.2m)

Schedule from MS Project XML, 2026-10-01 to 2027-03-19.

## Schedule

| ID | Task | Duration | Start | Finish |
| --- | --- | --- | --- | --- |
| 1 | WBS 1.1 - Bàn giao tim mốc VN2000 & định vị mố trụ cầu (1.0 Điểm) | 2d | 2026-10-01 | 2026-10-02 |
| 2 | WBS 1.2 - Rà phá bom mìn, dọn dẹp mặt bằng & dựng lán trại (12,500.0 m2) | 6d | 2026-10-03 | 2026-10-08 |
| 3 | WBS 1.3 - Thi công đường công vụ nhánh 6 & 6A tiếp cận mố trụ (1,536.5 m3) | 10d | 2026-10-09 | 2026-10-18 |
| 4 | WBS 1.4 - Xây dựng bãi đúc dầm Super-T, bệ đúc & trạm trộn 60m3/h (1.0 Hệ) | 13d | 2026-10-12 | 2026-10-24 |
| 5 | WBS 2.1 - Khoan thăm dò hang Karst sâu 5m vào đá liền khối (26.0 Lỗ) | 12d | 2026-10-25 | 2026-11-05 |
| 6 | WBS 2.2 - Khoan cọc nhồi D1200 M1 (3 cọc L=20m) & đổ BT C30 (60.0 m) | 7d | 2026-11-06 | 2026-11-12 |
| 7 | WBS 2.3 - Khoan cọc nhồi D1200 Trụ T1 (8 cọc L=40m) & đổ BT C30 (320.0 m) | 19d | 2026-11-10 | 2026-11-28 |
| 8 | WBS 2.4 - Khoan cọc nhồi D1200 Trụ T2 (8 cọc L=30m) & đổ BT C30 (240.0 m) | 17d | 2026-11-18 | 2026-12-04 |
| 9 | WBS 2.5 - Khoan cọc nhồi D1200 M2 (7 cọc L=36m) & đổ BT C30 (252.0 m) | 18d | 2026-11-25 | 2026-12-12 |
| 10 | WBS 2.6 - Thí nghiệm siêu âm 156 mặt cắt cọc, PDA & nén tĩnh (1.0 Gói) | 8d | 2026-12-13 | 2026-12-20 |
| 11 | WBS 3.1 - Đào hố móng ngàm đá, đập đầu 26 cọc & đổ BT lót C10 (26.0 Cọc) | 7d | 2026-12-21 | 2026-12-27 |
| 12 | WBS 3.2 - Cốt thép, ván khuôn & đổ bê tông bệ móng mố M1, M2 (173.2 m3) | 8d | 2026-12-28 | 2027-01-04 |
| 13 | WBS 3.3 - Cốt thép, ván khuôn & đổ bê tông bệ trụ T1, T2 (344.2 m3) | 10d | 2026-12-30 | 2027-01-08 |
| 14 | WBS 3.4 - Thi công thân đặc trụ T1, T2 (H=14.5m & 11.4m) BT C30 (196.8 m3) | 14d | 2027-01-09 | 2027-01-22 |
| 15 | WBS 3.5 - Thi công thân mố chân dê M1 & mố chữ U M2 BT C30 (138.4 m3) | 13d | 2027-01-06 | 2027-01-18 |
| 16 | WBS 3.6 - Thi công xà mũ trụ T1, T2, đá kê gối & khối chống xô (112.6 m3) | 8d | 2027-01-23 | 2027-01-30 |
| 17 | WBS 4.1 - Cốt thép, luồn cáp DUL 15 phiến dầm Super-T tại bãi (15.0 Phiến) | 28d | 2026-11-28 | 2026-12-25 |
| 18 | WBS 4.2 - Đổ bê tông C45 15 phiến dầm Super-T L=38.2m bãi đúc (434.8 m3) | 21d | 2026-12-26 | 2027-01-15 |
| 19 | WBS 4.3 - Căng kéo cáp DUL 15.2mm & bơm vữa ống gen dầm (15.0 Phiến) | 10d | 2027-01-16 | 2027-01-25 |
| 20 | WBS 4.4 - Lắp đặt 30 gối chậu cao su đơn/song hướng mố trụ (30.0 Cái) | 5d | 2027-01-31 | 2027-02-04 |
| 21 | WBS 4.5 - Lắp đường ray P43, vận chuyển & lao lắp 15 dầm Super-T (15.0 Phiến) | 10d | 2027-02-05 | 2027-02-14 |
| 22 | WBS 5.1 - Đổ bê tông dầm ngang mố trụ & bản liên tục nhiệt C35 (78.5 m3) | 5d | 2027-02-15 | 2027-02-19 |
| 23 | WBS 5.2 - Lắp 510 tấm ván khuôn đúc sẵn & cốt thép bản mặt cầu (510.0 Tấm) | 5d | 2027-02-20 | 2027-02-24 |
| 24 | WBS 5.3 - Đổ bê tông bản mặt cầu tại chỗ C35 (dày 180mm) (235.6 m3) | 6d | 2027-02-25 | 2027-03-02 |
| 25 | WBS 5.4 - Đổ bê tông bản quá độ C25 & đắp K98 đường đầu cầu (2.0 Bản) | 6d | 2027-03-01 | 2027-03-06 |
| 26 | WBS 5.5 - Lắp khe co giãn răng lược thép & ống thoát nước PVC (2.0 Bộ) | 6d | 2027-03-07 | 2027-03-12 |
| 27 | WBS 5.6 - Đổ bê tông gờ lan can C25 & lắp dựng tay vịn thép (260.8 m) | 8d | 2027-03-08 | 2027-03-15 |
| 28 | WBS 5.7 - Chống thấm & thảm bê tông nhựa C16 mặt cầu dày 7cm (1,620.0 m2) | 4d | 2027-03-16 | 2027-03-19 |
