# TIẾN ĐỘ THI CÔNG CẦU KM19+529.080 (3 NHỊP SUPER-T L=38.2M, DỰ ÁN CAO TỐC TUYÊN QUANG - HÀ GIANG)

Schedule from MS Project XML, 2026-10-01 to 2027-03-28.

## Resources

| Resource |
| --- |
| Tổ trắc đạc & định vị tim mốc cầu |
| Tổ máy khoan cọc nhồi D1200 & trắc địa Karst |
| Tổ thợ sắt thép cọc nhồi & bệ mố trụ |
| Tổ ván khuôn & đà giáo thân xà mũ |
| Tổ đúc dầm Super-T tại bãi đúc (Bê tông C45) |
| Tổ căng kéo cáp DUL 15.2mm & bơm vữa |
| Tổ vận chuyển & xe lao dầm P43 chuyên dụng |
| Tổ bản mặt cầu & liên tục nhiệt |
| Tổ thảm bê tông nhựa C16 & khe răng lược |
| Máy khoan cọc xoay đập thủy lực R618 |
| Giá lao dầm Super-T trọng lượng 78.88T |
| Trạm trộn BTXM 90m3/h & xe bồn 10m3 |

## Schedule

| ID | WBS | Task | Duration | Start | Finish | Predecessors |
| --- | --- | --- | --- | --- | --- | --- |
| 1 | 1.0 | **CHUẨN BỊ MẶT BẰNG, ĐƯỜNG CÔNG VỤ & BÃI ĐÚC DẦM** | 24d | 2026-10-01 | 2026-10-24 |  |
| 2 | 1.1 | Bàn giao tim mốc VN2000, cao độ quốc gia & tim mốc cầu | 2d | 2026-10-01 | 2026-10-02 |  |
| 3 | 1.2 | Rà phá bom mìn, dọn dẹp mặt bằng & dựng lán trại | 6d | 2026-10-03 | 2026-10-08 | 2 |
| 4 | 1.3 | Thi công đường công vụ nhánh 6 & 6A tiếp cận mố trụ | 10d | 2026-10-09 | 2026-10-18 | 3 |
| 5 | 1.4 | Xây dựng bãi đúc dầm Super-T, bệ đúc & trạm trộn BTXM | 13d | 2026-10-12 | 2026-10-24 | 4 |
| 6 | 2.0 | **KHOAN CỌC NHỒI D1200MM & XỬ LÝ ĐỊA CHẤT KARST** | 57d | 2026-10-25 | 2026-12-20 |  |
| 7 | 2.1 | Khoan thăm dò hang Karst sâu 5m dưới mũi cọc | 12d | 2026-10-25 | 2026-11-05 | 4 |
| 8 | 2.2 | Khoan cọc nhồi D1200mm M1 (3 cọc L=20m) & đổ bê tông C30 | 7d | 2026-11-06 | 2026-11-12 | 7 |
| 9 | 2.3 | Khoan cọc nhồi D1200mm Trụ T1 (8 cọc L=40m) & đổ bê tông C30 | 19d | 2026-11-10 | 2026-11-28 | 8 |
| 10 | 2.4 | Khoan cọc nhồi D1200mm Trụ T2 (8 cọc L=30m) & đổ bê tông C30 | 17d | 2026-11-18 | 2026-12-04 | 9 |
| 11 | 2.5 | Khoan cọc nhồi D1200mm M2 (7 cọc L=36m) & đổ bê tông C30 | 18d | 2026-11-25 | 2026-12-12 | 10 |
| 12 | 2.6 | Thí nghiệm siêu âm 156 mặt cắt, kiểm tra mũi cọc & thử tải PDA (9434 kN) | 8d | 2026-12-13 | 2026-12-20 | 10, 11 |
| 13 | 3.0 | **KẾT CẤU PHẦN DƯỚI (BỆ, THÂN, XÀ MŨ M1, M2 & T1, T2)** | 41d | 2026-12-21 | 2027-01-30 |  |
| 14 | 3.1 | Đào hố móng, đập đầu cọc & đổ bê tông lót mác C10 | 7d | 2026-12-21 | 2026-12-27 | 12 |
| 15 | 3.2 | Lắp dựng cốt thép, ván khuôn & đổ bê tông bệ móng mố M1, M2 | 8d | 2026-12-28 | 2027-01-04 | 14 |
| 16 | 3.3 | Lắp dựng cốt thép, ván khuôn & đổ bê tông bệ trụ T1, T2 C30 | 9d | 2026-12-30 | 2027-01-08 | 14 |
| 17 | 3.4 | Thi công thân đặc trụ T1, T2 (H=14.5m & 11.4m) bê tông C30 | 14d | 2027-01-09 | 2027-01-22 | 16 |
| 18 | 3.5 | Thi công thân mố chân dê M1 và thân mố chữ U M2 C30 | 13d | 2027-01-06 | 2027-01-18 | 15 |
| 19 | 3.6 | Thi công xà mũ trụ T1, T2, đá kê gối & khối chống xô C30 | 8d | 2027-01-23 | 2027-01-30 | 17 |
| 20 | 4.0 | **ĐÚC DẦM SUPER-T L=38.2M & LAO LẮP 3 NHỊP** | 78d | 2026-11-28 | 2027-02-14 |  |
| 21 | 4.1 | Gia công cốt thép, luồn cáp DUL 15 phiến dầm tại bãi đúc | 28d | 2026-11-28 | 2026-12-25 | 5 |
| 22 | 4.2 | Đổ bê tông C45 15 phiến dầm Super-T (dưỡng hộ đạt R28) | 21d | 2026-12-26 | 2027-01-15 | 21 |
| 23 | 4.3 | Căng kéo cáp DUL tao xoắn 15.2mm & bơm vữa ống gen | 10d | 2027-01-16 | 2027-01-25 | 22 |
| 24 | 4.4 | Lắp đặt 30 gối chậu cao su đơn/song hướng mố trụ | 5d | 2027-01-31 | 2027-02-04 | 19 |
| 25 | 4.5 | Lắp đường ray P43, vận chuyển & lao lắp 15 phiến dầm Super-T | 10d | 2027-02-05 | 2027-02-14 | 23, 24 |

| ID | WBS | Task | Duration | Start | Finish | Predecessors |
| --- | --- | --- | --- | --- | --- | --- |
| 26 | 5.0 | **DẦM NGANG, BẢN MẶT CẦU, LIÊN TỤC NHIỆT & ĐƯỜNG ĐẦU CẦU** | 33d | 2027-02-15 | 2027-03-19 |  |
| 27 | 5.1 | Đổ bê tông dầm ngang mố trụ & bản liên tục nhiệt C35 | 5d | 2027-02-15 | 2027-02-19 | 25 |
| 28 | 5.2 | Lắp 510 tấm ván khuôn đúc sẵn & lắp cốt thép bản mặt cầu | 5d | 2027-02-20 | 2027-02-24 | 27 |
| 29 | 5.3 | Đổ bê tông bản mặt cầu tại chỗ C35 (dày 180mm) | 6d | 2027-02-25 | 2027-03-02 | 28 |
| 30 | 5.4 | Đổ bê tông bản quá độ C25 sau 2 mố & đắp hạt chọn lọc K98 | 6d | 2027-03-01 | 2027-03-06 | 27 |
| 31 | 5.5 | Lắp đặt khe co giãn răng lược D=100mm & ống thoát nước D150 | 6d | 2027-03-07 | 2027-03-12 | 29 |
| 32 | 5.6 | Đổ bê tông gờ lan can C25 & lắp dựng tay vịn mạ kẽm | 8d | 2027-03-08 | 2027-03-15 | 29 |
| 33 | 5.7 | Phun màng chống thấm & thảm bê tông nhựa C16 dày 7cm | 4d | 2027-03-16 | 2027-03-19 | 31 |
| 34 | 6.0 | **THỬ TẢI CẦU, KIỂM ĐỊNH & BÀN GIAO KHAI THÁC** | 9d | 2027-03-20 | 2027-03-28 |  |
| 35 | 6.1 | Thử tải tĩnh/động toàn cầu bằng đoàn xe tải nặng | 5d | 2027-03-20 | 2027-03-24 | 33 |
| 36 | 6.2 | Hoàn thiện hồ sơ hoàn công & bàn giao đưa vào khai thác | 4d | 2027-03-25 | 2027-03-28 | 35 |
