# HTKT THI CÔNG SAN LẤP CỤM B9 VÀ ĐƯỜNG NỘI BỘ

Schedule from MS Project XML, 2026-09-20 to 2026-10-25.

## Schedule

| ID | WBS | Task | Type | Duration | Start | Finish |
| --- | --- | --- | --- | --- | --- | --- |
| 2 | 1 | **I. SAN LẤP CỤM B9 (88.7 HA)** |  | 34d | 2026-09-20 | 2026-10-23 |
| 3 | 1.1 | Phát quang mặt bằng san lấp |  | 15d | 2026-09-20 | 2026-10-04 |
| 4 | 1.2 | Đào khuôn, bóc đất hữu cơ san lấp dày 10cm |  | 15d | 2026-09-20 | 2026-10-04 |
| 5 | 1.3 | Vận chuyển nội bộ đất hữu cơ san lấp <5km |  | 15d | 2026-09-20 | 2026-10-04 |
| 6 | 1.4 | Thi công đắp đất/cát K90 san nền cụm B9 |  | 32d | 2026-09-22 | 2026-10-23 |
| 7 | 2 | **II. ĐƯỜNG NỘI BỘ CỤM B9 (L = 18,034M)** |  | 36d | 2026-09-20 | 2026-10-25 |
| 8 | 2.1 | Phát quang mặt bằng tuyến đường nội bộ |  | 13d | 2026-09-20 | 2026-10-02 |
| 9 | 2.2 | Đào khuôn đường vét hữu cơ nền đường |  | 14d | 2026-09-20 | 2026-10-03 |
| 10 | 2.3 | Vận chuyển nội bộ đất khuôn đường <5km |  | 14d | 2026-09-20 | 2026-10-03 |
| 11 | 2.4 | Thi công đắp cát K90 nền đường |  | 16d | 2026-09-22 | 2026-10-07 |
| 12 | 2.5 | Thi công đắp cát K95 (Lớp 1) |  | 15d | 2026-09-25 | 2026-10-09 |
| 13 | 2.6 | Thi công đắp cát K98 (Lớp 1) |  | 14d | 2026-09-28 | 2026-10-11 |
| 14 | 2.7 | Thi công Hệ thống thoát nước mưa TNM (D300-D1800) |  | 16d | 2026-09-26 | 2026-10-11 |
| 15 | 2.8 | Thi công Hệ thống thoát nước thải TNT (Ống HDPE) |  | 16d | 2026-09-28 | 2026-10-13 |
| 16 | 2.9 | Thi công lớp móng Base B (CPĐD loại 2) |  | 12d | 2026-10-06 | 2026-10-17 |
| 17 | 2.10 | Thi công lớp móng Base A (CPĐD loại 1) |  | 11d | 2026-10-10 | 2026-10-20 |
| 18 | 2.11 | Vận chuyển nội bộ đá Base A & B <5km |  | 15d | 2026-10-06 | 2026-10-20 |
| 19 | 2.12 | Tưới nhựa thấm bám 1.0 kg/m2 & Vệ sinh mặt móng |  | 9d | 2026-10-16 | 2026-10-24 |
| 20 | 2.13 | THI CÔNG LỚP THẢM BTN C19 (THẢM THÔ 6.5CM) - VỀ ĐÍCH |  | 9d | 2026-10-17 | 2026-10-25 |
| 21 | 3 | MỐC HOÀN THÀNH TOÀN DIỆN THẢM THÔ CỤM B9 | milestone | 0d | 2026-10-25 | 2026-10-25 |
